# MSRI HOP Redevelopment

Schedule from GanttProject, 2019-10-01 to 2023-06-07.
MIT Haystack

## Calendars

- Project calendar: Mon-Fri working; Sat-Sun off.

## Resources

| Resource |
| --- |
| John Barrett |
| Geoff Crew |
| Violet Pfeiffer |
| Dan Hoak |

## Schedule

| ID | WBS | Task | Duration | Start | Finish | Predecessors | Complete |
| --- | --- | --- | --- | --- | --- | --- | --- |
| 1 | 1 | **Documentation** | 957d | 2019-10-01 | 2023-05-31 |  | 23% |
| 2 | 1.1 | Requirements list | 306d | 2019-10-01 | 2020-12-01 |  | 99% |
| 3 | 1.2 | External review of requirements list | 6d | 2020-12-02 | 2020-12-09 | 2 |  |
| 4 | 1.3 | Specification document | 106d | 2020-09-07 | 2021-02-01 |  | 80% |
| 5 | 1.4 | External review of specification | 1d | 2021-02-02 | 2021-02-02 | 3, 4 | 100% |
| 6 | 1.5 | Help documentation - man pages | 415d | 2021-10-28 | 2023-05-31 | 29 |  |
| 7 | 1.6 | Developer guide | 415d | 2021-10-28 | 2023-05-31 | 29 |  |
| 8 | 1.7 | User guide | 415d | 2021-10-28 | 2023-05-31 | 29 |  |
| 9 | 2 | **Code Developement** | 788d | 2020-06-01 | 2023-06-07 |  | 18% |
| 10 | 2.1 | **Create build system** | 154d | 2020-06-01 | 2020-12-31 |  | 90% |
| 11 | 2.1.1 | Create and evaluate automake build system | 154d | 2020-06-01 | 2020-12-31 |  | 90% |
| 12 | 2.1.2 | Create and evaluate cmake build system | 153d | 2020-06-01 | 2020-12-30 |  | 90% |
| 13 | 2.2 | **Import legacy software** | 112d | 2020-07-30 | 2021-01-01 |  | 84% |
| 14 | 2.2.1 | Import old libraries (e.g. mk4utils) | 81d | 2020-07-31 | 2020-11-20 |  | 100% |
| 15 | 2.2.2 | Import and build old executables (fourfit, etc.) | 82d | 2020-07-30 | 2020-11-20 |  | 100% |
| 16 | 2.2.3 | Import tests for legacy libraries/execuatables (e.g. fourfit) | 30d | 2020-11-23 | 2021-01-01 | 14, 15 |  |
| 17 | 2.3 | **Develop new data container classes (DCC)** | 264d | 2020-06-01 | 2021-06-03 |  | 41% |
| 18 | 2.3.1 | Create data container class definitions | 140d | 2020-06-01 | 2020-12-11 |  | 75% |
| 19 | 2.3.2 | Disk I/O library for DCC | 55d | 2020-12-14 | 2021-02-26 | 18 |  |
| 20 | 2.3.3 | mk4 to new DCC conversion library | 98d | 2020-12-14 | 2021-04-28 | 18 | 40% |
| 21 | 2.3.4 | mk4 to DCC conversion executable | 26d | 2021-04-29 | 2021-06-03 | 20 | 40% |
| 22 | 2.3.5 | DiFX to DCC conversion executable | 56d | 2020-12-14 | 2021-03-01 | 18 |  |
| 23 | 2.4 | **Develop VLBI data analysis library and executables** | 497d | 2021-06-04 | 2023-05-01 | 17, 34, 38 |  |
| 24 | 2.4.1 | Demonstrate simple single-band-delay search | 14d | 2021-06-04 | 2021-06-23 |  |  |
| 25 | 2.4.2 | Implement data flagging (time, freq, ad-hoc) | 43d | 2021-06-04 | 2021-08-03 |  |  |
| 26 | 2.4.3 | Implement per-AP/per-channel phase/delay correction/calib. | 44d | 2021-06-04 | 2021-08-04 |  |  |
| 27 | 2.4.4 | Implement per-AP/sub-channel phase/delay correction/cal. | 160d | 2021-06-04 | 2022-01-13 |  |  |
| 28 | 2.4.5 | Implement per-AP/ad-hoc phase/delay correction/calib. | 161d | 2021-06-04 | 2022-01-14 |  |  |
| 29 | 2.4.6 | Demonstrate single-baseline fringe fit with new data containters/operators | 60d | 2021-08-05 | 2021-10-27 | 24, 25, 26 |  |
| 30 | 2.4.7 | Develop fourfit replacement | 300d | 2021-10-28 | 2022-12-21 | 29 |  |
| 31 | 2.4.8 | Develop alist replacement | 60d | 2021-10-28 | 2022-01-19 | 29 |  |
| 32 | 2.4.9 | Develop aedit replacement | 240d | 2022-01-20 | 2022-12-21 | 31, 47 |  |
| 33 | 2.4.10 | Experimental multi-baseline fringe-fit? | 171d | 2022-09-05 | 2023-05-01 |  |  |

| ID | WBS | Task | Duration | Start | Finish | Predecessors | Complete |
| --- | --- | --- | --- | --- | --- | --- | --- |
| 34 | 2.5 | **Develop utility libraries** | 112d | 2020-10-01 | 2021-03-05 |  | 45% |
| 35 | 2.5.1 | Develop messaging/logging utility | 37d | 2020-10-01 | 2020-11-20 |  | 90% |
| 36 | 2.5.2 | Develop timer tool for profiling | 15d | 2020-11-02 | 2020-11-20 |  | 90% |
| 37 | 2.5.3 | Develop math library (minimization, interpol., mx solve, etc.) | 90d | 2020-11-02 | 2021-03-05 |  | 20% |
| 38 | 2.6 | **Develop data operator library** | 94d | 2020-12-14 | 2021-04-22 |  | 28% |
| 39 | 2.6.1 | Develop basic data operator class definitions | 80d | 2020-12-14 | 2021-04-02 | 18 |  |
| 40 | 2.6.2 | Functor broadcast operator | 14d | 2021-04-05 | 2021-04-22 | 39 | 50% |
| 41 | 2.6.3 | Array reduction operator | 14d | 2021-04-05 | 2021-04-22 | 39 | 100% |
| 42 | 2.6.4 | Multidimensional FFT operator | 14d | 2021-04-05 | 2021-04-22 | 39 | 100% |
| 43 | 2.7 | **Develop python bindings/libraries** | 558d | 2020-11-02 | 2022-12-21 |  | 2% |
| 44 | 2.7.1 | Develop python control layer for fringe fitting control | 300d | 2021-10-28 | 2022-12-21 | 29, 45, 46 |  |
| 45 | 2.7.2 | python bindings to data operators | 109d | 2021-04-23 | 2021-09-22 | 38 |  |
| 46 | 2.7.3 | Python bindings to DCC | 98d | 2021-06-04 | 2021-10-19 | 17 |  |
| 47 | 2.7.4 | Develop python plotting utilities | 189d | 2020-11-02 | 2021-07-22 |  | 10% |
| 48 | 2.8 | **Parallel acceleration & Extras** | 524d | 2021-06-04 | 2023-06-07 |  |  |
| 49 | 2.8.1 | Implement parallel data operators for TBD tasks | 120d | 2022-12-22 | 2023-06-07 | 30 |  |
| 50 | 2.8.2 | Implement MPI executables for TBD tasks | 120d | 2022-12-22 | 2023-06-07 | 30 |  |
| 51 | 2.8.3 | I/O Import/Export executables (HDF5, UVFITS, etc.) | 300d | 2021-06-04 | 2022-07-28 | 17 |  |
