Schedule from MS Project XML, 2020-11-02 to 2023-05-19.

## Calendars

- Standard: Mon-Fri 08:00-12:00, 13:00-17:00; Sat-Sun off.

## Resources

| Resource |
| --- |
| John Barrett |
| Geoff Crew |
| Violet Pfeiffer |
| Dan Hoak |

## Schedule

| ID | WBS | Task | Type | Duration | Start | Finish | Predecessors | Complete |
| --- | --- | --- | --- | --- | --- | --- | --- | --- |
| 1 | 1 | **Documentation** |  | 665d | 2020-11-02 | 2023-05-19 |  | 1% |
| 2 | 1.1 | Requirements list | manual | 22d | 2020-11-02 | 2020-12-01 |  | 70% |
| 3 | 1.2 | External review of requirements list | manual | 6d | 2020-12-02 | 2020-12-09 | 2 |  |
| 4 | 1.3 | Specification document | manual | 29d | 2020-12-10 | 2021-01-19 | 3 | 10% |
| 5 | 1.4 | External review of specification | manual | 1d | 2021-01-20 | 2021-01-20 | 4 |  |
| 6 | 1.5 | Help documentation - man pages | manual | 471d | 2021-07-30 | 2023-05-19 | 29 |  |
| 7 | 1.6 | Developer guide | manual | 471d | 2021-07-30 | 2023-05-19 | 29 |  |
| 8 | 1.7 | User guide | manual | 471d | 2021-07-30 | 2023-05-19 | 29 |  |
| 9 | 2 | **Code Developement** |  | 651d | 2020-11-02 | 2023-05-01 |  | 6% |
| 10 | 2.1 | **Create build system** |  | 15d | 2020-11-02 | 2020-11-20 |  | 90% |
| 11 | 2.1.1 | Create and evaluate automake build system | manual | 15d | 2020-11-02 | 2020-11-20 |  | 90% |
| 12 | 2.1.2 | Create and evaluate cmake build system | manual | 15d | 2020-11-02 | 2020-11-20 |  | 90% |
| 13 | 2.2 | **Import legacy software** |  | 45d | 2020-11-02 | 2021-01-01 |  | 50% |
| 14 | 2.2.1 | Import old libraries (e.g. mk4utils) | manual | 15d | 2020-11-02 | 2020-11-20 |  | 100% |
| 15 | 2.2.2 | Import and build old executables (fourfit, etc.) | manual | 15d | 2020-11-02 | 2020-11-20 |  | 100% |
| 16 | 2.2.3 | Import tests for legacy libraries/execuatables (e.g. fourfit) | manual | 30d | 2020-11-23 | 2021-01-01 | 14, 15 |  |
| 17 | 2.3 | **Develop new data container classes (DCC)** |  | 86d | 2020-11-02 | 2021-03-01 |  | 26% |
| 18 | 2.3.1 | Create data container class definitions | manual | 30d | 2020-11-02 | 2020-12-11 |  | 75% |
| 19 | 2.3.2 | Disk I/O library for DCC | manual | 30d | 2020-12-14 | 2021-01-22 | 18 |  |
| 20 | 2.3.3 | mk4 to new DCC conversion library | manual | 30d | 2020-12-14 | 2021-01-22 | 18 | 40% |
| 21 | 2.3.4 | mk4 to DCC conversion executable | manual | 26d | 2021-01-25 | 2021-03-01 | 20 | 40% |
| 22 | 2.3.5 | DiFX to DCC conversion executable | manual | 56d | 2020-12-14 | 2021-03-01 | 18 |  |
| 23 | 2.4 | **Develop VLBI data analysis library and executables** |  | 561d | 2021-03-08 | 2023-05-01 | 17, 34, 38 |  |
| 24 | 2.4.1 | Demonstrate simple single-band-delay search | manual | 14d | 2021-03-08 | 2021-03-25 |  |  |
| 25 | 2.4.2 | Implement data flagging (time, freq, ad-hoc) | manual | 43d | 2021-03-08 | 2021-05-05 |  |  |
| 26 | 2.4.3 | Implement per-AP/per-channel phase/delay correction/calib. | manual | 44d | 2021-03-08 | 2021-05-06 |  |  |
| 27 | 2.4.4 | Implement per-AP/sub-channel phase/delay correction/cal. | manual | 160d | 2021-03-09 | 2021-10-18 |  |  |
| 28 | 2.4.5 | Implement per-AP/ad-hoc phase/delay correction/calib. | manual | 161d | 2021-03-08 | 2021-10-18 |  |  |
| 29 | 2.4.6 | Demonstrate single-baseline fringe fit with new data containters/operators | manual | 60d | 2021-05-07 | 2021-07-29 | 24, 26, 25 |  |
| 30 | 2.4.7 | Develop fourfit replacement | manual | 300d | 2021-07-30 | 2022-09-22 | 29 |  |
| 31 | 2.4.8 | Develop alist replacement | manual | 60d | 2021-07-30 | 2021-10-21 | 29 |  |
| 32 | 2.4.9 | Develop aedit replacement | manual | 240d | 2021-10-22 | 2022-09-22 | 47, 31 |  |
| 33 | 2.4.10 | Experimental multi-baseline fringe-fit? | manual | 171d | 2022-09-05 | 2023-05-01 |  |  |

| ID | WBS | Task | Type | Duration | Start | Finish | Predecessors | Complete |
| --- | --- | --- | --- | --- | --- | --- | --- | --- |
| 34 | 2.5 | **Develop utility libraries** |  | 90d | 2020-11-02 | 2021-03-05 |  | 37% |
| 35 | 2.5.1 | Develop messaging/logging utility | manual | 15d | 2020-11-02 | 2020-11-20 |  | 90% |
| 36 | 2.5.2 | Develop timer tool for profiling | manual | 15d | 2020-11-02 | 2020-11-20 |  | 90% |
| 37 | 2.5.3 | Develop math library (minimization, interpol., mx solve, etc.) | manual | 90d | 2020-11-02 | 2021-03-05 |  | 20% |
| 38 | 2.6 | **Develop data operator library** |  | 44d | 2020-12-14 | 2021-02-11 |  | 48% |
| 39 | 2.6.1 | Develop basic data operator class definitions | manual | 30d | 2020-12-14 | 2021-01-22 | 18 |  |
| 40 | 2.6.2 | Functor broadcast operator | manual | 14d | 2021-01-25 | 2021-02-11 | 39 | 50% |
| 41 | 2.6.3 | Array reduction operator | manual | 14d | 2021-01-25 | 2021-02-11 | 39 | 100% |
| 42 | 2.6.4 | Multidimensional FFT operator | manual | 14d | 2021-01-25 | 2021-02-11 | 39 | 100% |
| 43 | 2.7 | **Develop python bindings/libraries** |  | 494d | 2020-11-02 | 2022-09-22 |  | 1% |
| 44 | 2.7.1 | Develop python control layer for fringe fitting control | manual | 300d | 2021-07-30 | 2022-09-22 | 29, 45, 46 |  |
| 45 | 2.7.2 | python bindings to data operators | manual | 109d | 2021-02-12 | 2021-07-14 | 38 |  |
| 46 | 2.7.3 | Python bindings to DCC | manual | 98d | 2021-03-02 | 2021-07-15 | 17 |  |
| 47 | 2.7.4 | Develop python plotting utilities | manual | 189d | 2020-11-02 | 2021-07-22 |  | 5% |
| 48 | 2.8 | **Parallel acceleration & Extras** |  | 528d | 2021-03-02 | 2023-03-09 |  |  |
| 49 | 2.8.1 | Implement parallel data operators for TBD tasks | manual | 120d | 2022-09-23 | 2023-03-09 | 30 |  |
| 50 | 2.8.2 | Implement MPI executables for TBD tasks | manual | 120d | 2022-09-23 | 2023-03-09 | 30 |  |
| 51 | 2.8.3 | I/O Import/Export executables (HDF5, UVFITS, etc.) | manual | 300d | 2021-03-02 | 2022-04-25 | 17 |  |
| 52 | 3 | **Geodesy Specific Tasks** |  | 480d | 2021-03-02 | 2023-01-02 |  |  |
| 53 | 3.1 | Implement data containers for p-cal data | manual | 30d | 2021-03-02 | 2021-04-12 | 17 |  |
| 54 | 3.2 | Implement multi-tone p-cal correction | manual | 30d | 2021-04-13 | 2021-05-24 | 53 |  |
| 55 | 3.3 | Implement basic single-baseline dTEC search | manual | 120d | 2021-05-25 | 2021-11-08 | 54 |  |
| 56 | 3.4 | Implement multi-baseline dTEC search | manual | 120d | 2021-11-09 | 2022-04-25 | 55 |  |
| 57 | 3.5 | Source structure corrections? | manual | 300d | 2021-11-09 | 2023-01-02 | 55 |  |
